# Spring Testing Schedule

How a schedule from ProjectLibre changed from version to version. A marks actual dates.

## Version 1 (saved 2026-11-04)

Note of the change: Added Gantt chart

| ID | WBS | Task | Duration | Start | Finish | Predecessors | Constraint |
| --- | --- | --- | --- | --- | --- | --- | --- |
| 1 | 1 | **Project Complete** | 98d | 2026-10-21 | 2027-04-13 |  |  |
| 2 | 1.1 | **Testing Design Complete** | 43d | 2026-10-21 | 2027-01-26 |  |  |
| 4 | 1.1.1 | **Testing Plans** | 13d | 2026-10-21 | 2026-11-06 |  |  |
| 5 |  | Magnetometer Test Plan | 13d | 2026-10-21 | 2026-11-06 |  |  |
| 6 |  | Instrument Test Plan | 13d | 2026-10-21 | 2026-11-06 |  |  |
| 7 |  | Link Test Plan | 13d | 2026-10-21 | 2026-11-06 |  |  |
| 8 |  | Flatsat Test Plan | 13d | 2026-10-21 | 2026-11-06 |  |  |
| 9 |  | Full Bill of Materials | 13d | 2026-10-21 | 2026-11-06 |  |  |
| 11 |  | DR 2, Session 1 | 0d | 2026-11-09 | 2026-11-09 |  | start no earlier than 2026-11-09 |
| 13 |  | DR 2, Session 2 | 0d | 2026-11-16 | 2026-11-16 | 4 | start no earlier than 2026-11-16 |
| 15 | 1.1.2 | **Manufacturing Plans** | 8d | 2026-11-09 | 2026-11-18 |  |  |
| 16 |  | Magnetometer Manufacturing Plan | 8d | 2026-11-09 | 2026-11-18 | 5 |  |
| 17 |  | Instrument Manufacturing Plan | 8d | 2026-11-09 | 2026-11-18 | 6 |  |
| 18 |  | Link Manufacturing Plan | 8d | 2026-11-09 | 2026-11-18 | 7 |  |
| 19 |  | Flatsat Manufacturing Plan | 8d | 2026-11-09 | 2026-11-18 | 8 |  |
| 21 | 1.1.3 | **Software Development** | 30d | 2026-11-09 | 2027-01-26 |  |  |
| 22 |  | Instrument Algorithms | 30d | 2026-11-09 | 2027-01-26 | 6 |  |
| 23 |  | CDH Algorithms | 30d | 2026-11-09 | 2027-01-26 | 8 |  |
| 24 |  | Power Algorithms | 25d | 2026-11-09 | 2027-01-19 | 8 |  |
| 25 |  | GNC Algorithms | 25d | 2026-11-09 | 2027-01-19 | 5 |  |
| 26 |  | Comms Algorithms | 30d | 2026-11-09 | 2027-01-26 | 7 |  |
| 28 | 1.2 | **Procurement** | 28d | 2026-11-19 | 2027-02-03 | 15 |  |
| 29 | 1.2.1 | **Magnetometer** | 15d | 2026-11-19 | 2027-01-15 | 16 |  |
| 30 |  | Magnetometer | 10d | 2026-11-19 | 2027-01-08 |  |  |
| 31 |  | Wiring | 5d | 2026-11-19 | 2026-12-02 |  |  |
| 32 |  | Arduino | 10d | 2026-11-19 | 2027-01-08 |  |  |
| 33 |  | Wood for Test Stand | 5d | 2026-11-19 | 2026-12-02 |  |  |
| 34 |  | DB9 to USB Cable | 2d | 2026-11-19 | 2026-11-20 |  |  |
| 35 |  | Additional Power Supply | 15d | 2026-11-19 | 2027-01-15 |  |  |
| 37 | 1.2.2 | **Instrument** | 28d | 2026-11-19 | 2027-02-03 | 17 |  |
| 38 |  | Event Camera | 28d | 2026-11-19 | 2027-02-03 |  |  |
| 39 |  | Lens | 7d | 2026-11-19 | 2026-12-04 |  |  |
| 40 |  | Camera Tripod | 5d | 2026-11-19 | 2026-12-02 |  |  |
| 41 |  | Standard Camera | 5d | 2026-11-19 | 2026-12-02 |  |  |
| 42 |  | Tarp | 5d | 2026-11-19 | 2026-12-02 |  |  |
| 43 |  | Event Software | 10d | 2026-11-19 | 2027-01-08 |  |  |
| 44 |  | Lighting | 5d | 2026-11-19 | 2026-12-02 |  |  |
| 45 |  | LED | 5d | 2026-11-19 | 2026-12-02 |  |  |
| 46 |  | Arduino | 10d | 2026-11-19 | 2027-01-08 |  |  |
| 47 |  | IMU | 10d | 2026-11-19 | 2027-01-08 |  |  |
| 48 |  | Nerf Gun and Darts | 10d | 2026-11-19 | 2027-01-08 |  |  |
| 49 |  | Misc Electronics | 5d | 2026-11-19 | 2026-12-02 |  |  |
| 51 | 1.2.3 | **Link** | 10d | 2026-11-19 | 2027-01-08 | 18 |  |
| 52 |  | Lime SDR Mini | 10d | 2026-11-19 | 2027-01-08 |  |  |
| 53 |  | 2X2 Patch Array | 10d | 2026-11-19 | 2027-01-08 |  |  |
| 54 |  | Dipole | 10d | 2026-11-19 | 2027-01-08 |  |  |
| 55 |  | Computer | 10d | 2026-11-19 | 2027-01-08 |  |  |
| 57 | 1.2.4 | **Flatsat** | 15d | 2026-11-19 | 2027-01-15 | 19 |  |
| 58 |  | Aluminum Plate | 15d | 2026-11-19 | 2027-01-15 |  |  |
| 59 |  | Cables | 5d | 2026-11-19 | 2026-12-02 |  |  |
| 60 |  | PCBs | 15d | 2026-11-19 | 2027-01-15 |  |  |
| 61 |  | CDH Computer | 5d | 2026-11-19 | 2026-12-02 |  |  |
| 62 |  | Structure Materials | 5d | 2026-11-19 | 2026-12-02 |  |  |
| 63 |  | Harnesses | 5d | 2026-11-19 | 2026-12-02 |  |  |
| 64 |  | Power Supply | 15d | 2026-11-19 | 2027-01-15 |  |  |
| 66 | 1.3 | **Fabrication** | 25d | 2027-01-11 | 2027-02-12 |  |  |
| 67 | 1.3.1 | **Magnetometer** | 7d | 2027-01-18 | 2027-01-26 | 29 |  |
| 68 |  | Magnetometer Test Stand | 7d | 2027-01-18 | 2027-01-26 |  |  |
| 70 | 1.3.2 | **Instrument** | 7d | 2027-02-04 | 2027-02-12 | 37 |  |
| 71 |  | Event Camera Stand | 5d | 2027-02-04 | 2027-02-10 |  |  |
| 72 |  | Moving Light Source Setup | 7d | 2027-02-04 | 2027-02-12 |  |  |
| 74 | 1.3.3 | **Link** | 7d | 2027-01-11 | 2027-01-19 | 51 |  |
| 75 |  | Antenna | 7d | 2027-01-11 | 2027-01-19 |  |  |
| 77 | 1.3.4 | **Flatsat** | 10d | 2027-01-18 | 2027-01-29 | 57 |  |
| 78 |  | Enclosure | 10d | 2027-01-18 | 2027-01-29 |  |  |
| 79 |  | Elecronics Assembly | 7d | 2027-01-18 | 2027-01-26 |  |  |
| 81 | 1.4 | **Component Testing** | 25d | 2026-12-03 | 2027-02-05 |  |  |
| 82 | 1.4.1 | **Magnetometer** | 7d | 2027-01-11 | 2027-01-19 |  |  |
| 83 |  | Inspect Magnetometer | 2d | 2027-01-11 | 2027-01-12 | 30 |  |
| 84 |  | Inspect Power Supply | 2d | 2027-01-18 | 2027-01-19 | 35 |  |

| ID | WBS | Task | Duration | Start | Finish | Predecessors | Constraint |
| --- | --- | --- | --- | --- | --- | --- | --- |
| 85 |  | Inspect other electronics | 2d | 2027-01-11 | 2027-01-12 | 31, 32, 34 |  |
| 87 | 1.4.2 | **Instrument** | 25d | 2026-12-03 | 2027-02-05 |  |  |
| 88 |  | Inpect Event Camera | 2d | 2027-02-04 | 2027-02-05 | 38 |  |
| 89 |  | Verify Event Camera works with software / laptop | 2d | 2027-01-11 | 2027-01-12 | 43 |  |
| 90 |  | Inspect Lens | 2d | 2026-12-07 | 2027-01-07 | 39 |  |
| 91 |  | Inspect other electronics | 2d | 2026-12-03 | 2026-12-04 | 44, 45, 49 |  |
| 92 |  | Inspect Arduino | 2d | 2027-01-11 | 2027-01-12 | 46 |  |
| 93 |  | Inspect IMU | 2d | 2027-01-11 | 2027-01-12 | 47 |  |
| 95 | 1.4.3 | **Link** | 9d | 2027-01-11 | 2027-01-21 |  |  |
| 96 |  | Inspect SDR Mini | 2d | 2027-01-11 | 2027-01-12 | 52 |  |
| 97 |  | Inspect Patch Array | 2d | 2027-01-11 | 2027-01-12 | 53 |  |
| 98 |  | Inspect Fabricated Antenna | 2d | 2027-01-20 | 2027-01-21 | 75 |  |
| 99 |  | Inspect Dipole | 2d | 2027-01-11 | 2027-01-12 | 54 |  |
| 101 | 1.4.4 | **Flatsat** | 12d | 2026-12-03 | 2027-01-19 |  |  |
| 102 |  | Inspect PCB and verify functionality | 2d | 2027-01-18 | 2027-01-19 | 60 |  |
| 103 |  | Inspect CDH computer | 2d | 2026-12-03 | 2026-12-04 | 61 |  |
| 104 |  | Inspect Power Supply | 2d | 2027-01-18 | 2027-01-19 | 64 |  |
| 106 | 1.5 | **Subsystem Integration** | 28d | 2027-01-20 | 2027-02-26 |  |  |
| 107 |  | Magnetometer | 5d | 2027-01-20 | 2027-01-26 | 25, 82 |  |
| 109 |  | Instrument | 15d | 2027-02-08 | 2027-02-26 | 22, 87 |  |
| 111 |  | Link | 10d | 2027-01-27 | 2027-02-09 | 26, 95 |  |
| 113 |  | Flatsat | 20d | 2027-01-20 | 2027-02-16 | 24, 25, 101 |  |
| 115 | 1.6 | **Subsystem Testing** | 35d | 2027-01-27 | 2027-03-16 |  |  |
| 116 |  | Magnetometer | 15d | 2027-01-27 | 2027-02-16 | 107 |  |
| 118 |  | Instrument | 15d | 2027-02-08 | 2027-02-26 | 87 |  |
| 120 |  | Link | 15d | 2027-02-10 | 2027-03-02 | 111 |  |
| 122 |  | Flatsat | 20d | 2027-02-17 | 2027-03-16 | 113 |  |
| 124 |  | System Integration | 10d | 2027-03-17 | 2027-03-30 | 116, 118, 120, 122 |  |
| 126 |  | System Test | 10d | 2027-03-31 | 2027-04-13 | 124 |  |
| 127 |  | Design Review 3 | 10d | 2027-02-15 | 2027-02-26 | 81 | start no earlier than 2027-02-15 |
| 129 |  | Project Expo | 0d | 2027-04-15 | 2027-04-15 | 1 | start no earlier than 2027-04-15 |
| 131 |  | Design Review 4 | 10d | 2027-04-14 | 2027-04-27 | 1 | start no earlier than 2027-04-12 |
| 133 |  | Hardware Breakdown | 8d | 2027-04-15 | 2027-04-26 | 129 | start no earlier than 2027-04-01 |
| 135 |  | Final Report | 10d | 2027-04-14 | 2027-04-27 | 1 | start no earlier than 2027-04-13 |

## Version 2 (saved 2026-11-18)

Note of the change: updated schedule

Last finish 2027-04-27 → 2027-05-04 (+7d). Complete tasks 0 → 8.

Added:

| ID | Task | Duration | Start | Finish | Predecessors |
| --- | --- | --- | --- | --- | --- |
| 50 | USB, Power, and BNC Cables | 5d | 2026-11-19 | 2026-12-02 | 15 |
| 51 | Battery Pack | 15d | 2026-11-09 | 2026-12-04 | 7 |
| 52 | Thermocouples | 15d | 2026-11-09 | 2026-12-04 | 7 |
| 53 | EPS Board | 20d | 2026-11-09 | 2027-01-12 | 7 |
| 64 | Projectile Testing Setup | 7d | 2027-01-18 | 2027-01-26 | 34, 35, 36, 37, 41, 42, 62 |
| 69 | Power Electronics | 7d | 2027-01-13 | 2027-01-21 | 50, 51, 53, 57 |
| 70 | CDH Electronics | 7d | 2027-01-11 | 2027-01-19 | 50, 52, 54, 57 |
| 76 | Calibration | 3d | 2027-01-15 | 2027-01-20 | 24, 25, 26, 28, 29 |
| 89 | Confirm Computer Reads Signal | 2d | 2027-01-22 | 2027-01-25 | 85, 86, 87, 88 |
| 90 | **Flatsat** | 9d | 2026-12-03 | 2027-01-14 |  |
| 91 | Inspect EPS | 2d | 2027-01-13 | 2027-01-14 | 53 |
| 92 | Inspect Battery | 2d | 2026-12-07 | 2027-01-07 | 51 |
| 95 | Verify Cable Continuity | 2d | 2026-12-03 | 2026-12-04 | 50, 56 |
| 96 | Inspect Thermocouples | 2d | 2026-12-07 | 2027-01-07 | 52 |
| 104 | **Instrument** | 7d | 2027-02-12 | 2027-02-22 |  |
| 105 | Test 1: Moving Light Source | 7d | 2027-02-12 | 2027-02-22 | 63, 99 |
| 106 | Test 2: Projectile Tracking | 7d | 2027-02-12 | 2027-02-22 | 64, 99 |
| 108 | **Flatsat** | 32d | 2027-01-20 | 2027-03-04 |  |
| 109 | Test 1: Hardware Inspection | 5d | 2027-01-22 | 2027-01-28 | 15, 68, 69, 70, 91, 92, 93, 94, 95, 96 |
| 110 | Test 2: Memory Capacity and Transfer | 5d | 2027-01-20 | 2027-01-26 | 18, 70, 93, 95 |
| 111 | Test 3: Data Processing and Packetization | 5d | 2027-01-20 | 2027-01-26 | 18, 70, 93, 95 |
| 112 | Test 4: Operating Modes and Recovery | 5d | 2027-01-22 | 2027-01-28 | 18, 19, 69, 70, 91, 92, 93, 94, 96 |

Removed: 59 Cables; 60 PCBs; 79 Elecronics Assembly; 102 Inspect PCB and verify functionality; 118 Instrument; 122 Flatsat; 127 Design Review 3; 131 Design Review 4

Changed:

| ID | Task | Start | Finish | Duration | Complete | Predecessors | Other |
| --- | --- | --- | --- | --- | --- | --- | --- |
| 1 | **Project Complete** |  | 2027-04-13 → 2027-04-08 (-5d) | 98d → 95d | 0% → 14% |  |  |
| 2 | **Testing Design Complete** |  | 2027-01-26 → 2027-01-12 (-14d) | 43d → 33d | 0% → 47% |  |  |
| 3 | **Testing Plans** |  |  |  | 0% → 100% |  |  |
| 4 | Magnetometer Test Plan |  |  |  | 0% → 100% |  |  |
| 5 | Instrument Test Plan |  |  |  | 0% → 100% |  |  |
| 6 | Link Test Plan |  |  |  | 0% → 100% |  |  |
| 7 | Flatsat Test Plan |  |  |  | 0% → 100% |  |  |
| 8 | Full Bill of Materials |  |  |  | 0% → 100% |  |  |
| 9 | DR 2, Session 1 |  |  |  | 0% → 100% |  |  |
| 10 | DR 2, Session 2 |  |  |  | 0% → 100% |  |  |
| 11 | **Manufacturing Plans** | 2026-11-09 → 2026-11-06 (-3d) |  | 8d → 9d | 0% → 82% |  |  |
| 12 | Magnetometer Manufacturing Plan | 2026-11-09 → 2026-11-06 (-3d) |  |  | 0% → 87% |  | constraint none → finish no later than 2026-11-18 |
| 13 | Instrument Manufacturing Plan | 2026-11-09 → 2026-11-06 (-3d) |  | 8d → 9d | 0% → 80% |  | constraint none → finish no later than 2026-11-18 |
| 14 | Link Manufacturing Plan | 2026-11-09 → 2026-11-06 (-3d) |  | 8d → 9d | 0% → 80% |  | constraint none → finish no later than 2026-11-18 |
| 15 | Flatsat Manufacturing Plan | 2026-11-09 → 2026-11-06 (-3d) |  | 8d → 9d | 0% → 80% |  | constraint none → finish no later than 2026-11-18 |
| 16 | **Software Development** |  | 2027-01-26 → 2027-01-12 (-14d) | 30d → 20d |  |  |  |
| 17 | Instrument Algorithms |  | 2027-01-26 → 2027-01-12 (-14d) | 30d → 20d |  |  |  |
| 18 | CDH Algorithms |  | 2027-01-26 → 2027-01-12 (-14d) | 30d → 20d |  |  |  |
| 19 | Power Algorithms |  | 2027-01-19 → 2027-01-12 (-7d) | 25d → 20d |  |  |  |
| 20 | GNC Algorithms |  | 2027-01-19 → 2027-01-12 (-7d) | 25d → 20d |  |  |  |
| 21 | Comms Algorithms |  | 2027-01-26 → 2027-01-12 (-14d) | 30d → 20d |  |  |  |
| 22 | **Procurement** | 2026-11-19 → 2026-11-09 (-10d) | 2027-02-03 → 2027-01-15 (-19d) | 28d → 22.25d | 0% → 2% | 11 → none |  |
| 23 | **Magnetometer** | 2026-11-19 → 2026-11-18 (-1d) |  | 15d → 15.25d | 0% → 2% | 12 → none |  |
| 24 | Magnetometer | 2026-11-19 → 2026-11-18 (-1d) | 2027-01-08 → 2027-01-07 (-1d) |  | 0% → 10% | none → 12 |  |
| 25 | Wiring | 2026-11-19 → 2026-11-18 (-1d) |  |  |  | none → 12 |  |
| 26 | Arduino | 2026-11-19 → 2026-11-18 (-1d) |  |  |  | none → 12 |  |
| 27 | Wood for Test Stand | 2026-11-19 → 2026-11-18 (-1d) |  |  |  | none → 12 |  |
| 28 | DB9 to USB Cable | 2026-11-19 → 2026-11-18 (-1d) | 2026-11-20 → 2026-12-02 (+12d) | 2d → 5d |  | none → 12 |  |
| 29 | Additional Power Supply | 2026-11-19 → 2026-11-18 (-1d) |  |  |  | none → 12 |  |
| 30 | **Instrument** | 2026-11-19 → 2026-11-09 (-10d) | 2027-02-03 → 2027-01-08 (-26d) | 28d → 18d | 0% → 3% | 13 → none |  |
| 31 | Event Camera | 2026-11-19 → 2026-11-09 (-10d) | 2027-02-03 → 2027-01-08 (-26d) | 28d → 18d | 0% → 10% | none → 5 | constraint none → start no later than 2026-11-09 |
| 32 | Lens | 2026-11-19 → 2026-11-18 (-1d) | 2026-12-04 → 2026-12-03 (-1d) |  | 0% → 10% | none → 5 |  |
| 33 | Camera Tripod |  |  |  |  | none → 13 |  |
| 34 | Standard Camera |  |  |  |  | none → 13 |  |
| 35 | Tarp |  |  |  |  | none → 13 |  |
| 36 | Event Software | 2026-11-19 → 2026-11-18 (-1d) | 2027-01-08 → 2027-01-07 (-1d) |  |  | none → 5 |  |
| 37 | Lighting |  |  |  |  | none → 13 |  |
| 38 | LED |  |  |  |  | none → 13 |  |
| 39 | Arduino |  |  |  |  | none → 13 |  |
| 40 | IMU |  |  |  |  | none → 13 |  |
| 41 | Nerf Gun and Darts |  |  |  |  | none → 13 |  |
| 42 | Misc Electronics |  |  |  |  | none → 13 |  |
| 43 | **Link** |  |  |  |  | 14 → none |  |
| 44 | Lime SDR Mini |  |  |  |  | none → 14 |  |
| 45 | 2X2 Patch Array |  |  |  |  | none → 14 |  |
| 46 | Dipole |  |  |  |  | none → 14 |  |
| 47 | Computer |  |  |  |  | none → 14 |  |
| 48 | **Flatsat** | 2026-11-19 → 2026-11-09 (-10d) | 2027-01-15 → 2027-01-12 (-3d) | 15d → 20d | 0% → 3% | 15 → none |  |
| 49 | Aluminum Plate | 2026-11-19 → 2026-11-18 (-1d) | 2027-01-15 → 2026-11-20 (-56d) | 15d → 3d | 0% → 100% |  |  |
| 54 | CDH Computer | 2026-11-19 → 2026-11-09 (-10d) | 2026-12-02 → 2026-12-04 (+2d) | 5d → 15d |  | none → 7 |  |
| 55 | Structure Materials |  |  |  |  | none → 15 |  |
| 56 | Harnesses |  |  |  |  | none → 15 |  |
| 57 | Power Supply |  | 2027-01-15 → 2027-01-08 (-7d) | 15d → 10d |  | none → 15 |  |
| 58 | **Fabrication** | 2027-01-11 → 2026-12-03 (-39d) | 2027-02-12 → 2027-01-26 (-17d) | 25d → 17d |  |  |  |
| 59 | **Magnetometer** | 2027-01-18 → 2027-01-08 (-10d) | 2027-01-26 → 2027-01-18 (-8d) |  |  | 23 → none |  |
| 60 | Magnetometer Test Stand | 2027-01-18 → 2027-01-08 (-10d) | 2027-01-26 → 2027-01-18 (-8d) |  |  | none → 24, 27 |  |
| 61 | **Instrument** | 2027-02-04 → 2027-01-11 (-24d) | 2027-02-12 → 2027-01-26 (-17d) | 7d → 12d |  | 30 → none |  |
| 62 | Event Camera Stand | 2027-02-04 → 2027-01-11 (-24d) | 2027-02-10 → 2027-01-15 (-26d) |  |  | none → 31, 32, 33 |  |
| 63 | Moving Light Source Setup | 2027-02-04 → 2027-01-18 (-17d) | 2027-02-12 → 2027-01-26 (-17d) |  |  | none → 36, 38, 39, 40, 42, 62 |  |
| 65 | **Link** |  |  |  |  | 43 → none |  |
| 66 | Antenna |  |  |  |  | none → 44, 45, 46, 47 |  |
| 67 | **Flatsat** | 2027-01-18 → 2026-12-03 (-46d) | 2027-01-29 → 2027-01-21 (-8d) | 10d → 14d |  | 48 → none |  |
| 68 | Enclosure | 2027-01-18 → 2026-12-03 (-46d) | 2027-01-29 → 2027-01-15 (-14d) |  |  | none → 49, 55 |  |
| 71 | **Component Testing** |  | 2027-02-05 → 2027-01-25 (-11d) | 25d → 16d |  |  |  |
| 72 | **Magnetometer** | 2027-01-11 → 2027-01-08 (-3d) | 2027-01-19 → 2027-01-20 (+1d) | 7d → 8.25d |  |  |  |
| 73 | Inspect Magnetometer | 2027-01-11 → 2027-01-08 (-3d) | 2027-01-12 → 2027-01-11 (-1d) |  |  |  |  |
| 74 | Inspect Power Supply | 2027-01-18 → 2027-01-15 (-3d) |  |  |  |  |  |
| 75 | Inspect other electronics | 2027-01-11 → 2027-01-08 (-3d) |  |  |  |  |  |
| 77 | **Instrument** |  | 2027-02-05 → 2027-01-21 (-15d) | 25d → 14d |  |  |  |
| 78 | Inpect Event Camera | 2027-02-04 → 2027-01-11 (-24d) | 2027-02-05 → 2027-01-19 (-17d) | 2d → 7d |  |  |  |

| ID | Task | Start | Finish | Duration | Predecessors | Other |
| --- | --- | --- | --- | --- | --- | --- |
| 79 | Verify Event Camera works with software / laptop | 2027-01-11 → 2027-01-20 (+9d) | 2027-01-12 → 2027-01-21 (+9d) |  | 36 → 36, 78 |  |
| 80 | Inspect Lens | 2026-12-07 → 2026-12-04 (-3d) | 2027-01-07 → 2026-12-07 (-31d) |  |  |  |
| 84 | **Link** |  | 2027-01-21 → 2027-01-25 (+4d) | 9d → 11d |  |  |
| 93 | Inspect CDH computer | 2026-12-03 → 2026-12-07 (+4d) | 2026-12-04 → 2027-01-07 (+34d) |  |  |  |
| 94 | Inspect Power Supply | 2027-01-18 → 2027-01-11 (-7d) | 2027-01-19 → 2027-01-12 (-7d) |  |  |  |
| 97 | **Subsystem Integration** |  | 2027-02-26 → 2027-02-18 (-8d) | 28d → 21.75d |  |  |
| 98 | Magnetometer |  | 2027-01-26 → 2027-01-27 (+1d) |  | 20, 72 → 20, 60, 73, 74, 75, 76 |  |
| 99 | Instrument | 2027-02-08 → 2027-01-22 (-17d) | 2027-02-26 → 2027-02-11 (-15d) |  | 17, 77 → 17, 62, 78, 79, 80, 81, 82, 83 |  |
| 100 | Link | 2027-01-27 → 2027-01-26 (-1d) | 2027-02-09 → 2027-02-08 (-1d) |  | 21, 84 → 21, 85, 86, 87, 88, 89 |  |
| 101 | Flatsat | 2026-12-03 → 2027-01-22 (+50d) | 2027-01-19 → 2027-02-18 (+30d) | 12d → 20d | none → 18, 19, 68, 69, 70, 91, 92, 93, 94, 95, 96 | baseline start 2026-12-03 → 2027-01-20; baseline finish 2027-01-19 → 2027-02-16 |
| 102 | **Subsystem Testing** | 2027-01-27 → 2027-01-20 (-7d) | 2027-03-16 → 2027-03-04 (-12d) | 35d → 32d |  |  |
| 103 | Magnetometer |  | 2027-02-16 → 2027-02-17 (+1d) |  |  |  |
| 107 | Link | 2027-02-10 → 2027-02-09 (-1d) | 2027-03-02 → 2027-03-01 (-1d) |  |  |  |
| 113 | Test 5: Autonomous Integrated Multi-day Test | 2027-01-20 → 2027-02-19 (+30d) | 2027-02-16 → 2027-03-04 (+16d) | 20d → 10d | 19, 20, 101 → 101, 109, 110, 111, 112 | was named Flatsat; baseline start 2027-01-20 → none; baseline finish 2027-02-16 → none |
| 114 | System Integration | 2027-03-17 → 2027-03-05 (-12d) | 2027-03-30 → 2027-03-18 (-12d) |  | 103, Instrument, 107, Flatsat → 103, 105, 106, 107, 113 |  |
| 115 | System Test | 2027-03-31 → 2027-03-19 (-12d) | 2027-04-13 → 2027-04-08 (-5d) | 10d → 15d |  |  |
| 116 | Project Expo |  |  |  | 1 → none |  |
| 117 | Hardware Breakdown |  |  |  |  | constraint start no earlier than 2027-04-01 → must finish on 2027-04-27 |
| 118 | Final Report | 2027-04-14 → 2027-04-09 (-5d) | 2027-04-27 → 2027-05-04 (+7d) | 10d → 18d | 1 → 115 | constraint start no earlier than 2027-04-13 → none |
